# GlasuvaneBG-2

Schedule from MS Project, 2022-02-04 to 2022-09-12, costs in $, A marks actual dates.

## Calendars

- Standard: Mon-Fri 08:00-12:00, 13:00-17:00; Sat-Sun off.

## Resources

| Resource |
| --- |
| Бизнес аналитик |
| Разработчик |
| Мениджър на проекта |
| QA тестер |
| ГПИ Дизайнер |

## Schedule

| ID | WBS | Task | Type | Duration | Start | Finish | Predecessors | Complete | Remaining | Total slack | Free slack | Constraint | Resources | Work | Actual work | Cost | Actual cost |
| --- | --- | --- | --- | --- | --- | --- | --- | --- | --- | --- | --- | --- | --- | --- | --- | --- | --- |
| 1 | 1 | **GlasuvaneBG** |  | 157d | 2022-02-04 A | 2022-09-12 |  | 44% | 88.28d | 0d |  |  |  | 2216h | 963.92h | 69,640 | 29,276.8 |
| 2 | 1.1 | **Анализ и дефиниция** |  | 22d | 2022-02-04 A | 2022-03-07 A |  | 100% |  |  |  |  |  | 320h | 320h | 11,200 | 11,200 |
| 3 | 1.1.1 | Събиране на изискванията |  | 15d | 2022-02-04 A | 2022-02-24 A |  | 100% |  |  |  | start no earlier than 2022-02-04 | Бизнес аналитик | 120h | 120h | 4,200 | 4,200 |
| 4 | 1.1.2 | Документиране на изискванията |  | 20d | 2022-02-07 A | 2022-03-04 A | 3SS | 100% |  |  |  | finish no earlier than 2022-03-04 | Бизнес аналитик | 160h | 160h | 5,600 | 5,600 |
| 5 | 1.1.3 | Преглед на документа с изискванията |  | 1d | 2022-03-07 A | 2022-03-07 A | 4 | 100% |  |  |  |  | Бизнес аналитик; Разработчик; Мениджър на проекта; QA тестер; ГПИ Дизайнер | 40h | 40h | 1,400 | 1,400 |
| 6 | 1.1.4 | Подписване на документа с изискванията | milestone | 0d | 2022-03-07 A | 2022-03-07 A | 5 | 100% |  |  |  |  | Бизнес аналитик |  |  |  |  |
| 7 | 1.2 | **Проектиране** |  | 20d | 2022-03-08 A | 2022-04-04 A |  | 100% |  |  |  |  |  | 280h | 280h | 7,960 | 7,960 |
| 8 | 1.2.1 | Определяне на подходящи технологии |  | 7d | 2022-03-08 A | 2022-03-16 A | 6 | 100% |  |  |  | finish no earlier than 2022-03-16 | Бизнес аналитик; Разработчик | 112h | 112h | 3,360 | 3,360 |
| 9 | 1.2.2 | Документиране на избора на технологии |  | 4d | 2022-03-17 A | 2022-03-22 A | 8 | 100% |  |  |  | finish no earlier than 2022-03-22 | Разработчик | 32h | 32h | 800 | 800 |
| 10 | 1.2.3 | Проектиране на архитектурата |  | 7d | 2022-03-23 A | 2022-03-31 A | 9 | 100% |  |  |  | finish no earlier than 2022-03-31 | Разработчик | 56h | 56h | 1,400 | 1,400 |
| 11 | 1.2.4 | Документиране на резултатите от проектирането |  | 5d | 2022-03-28 A | 2022-04-01 A | 10SS | 100% |  |  |  | finish no earlier than 2022-04-01 | Разработчик | 40h | 40h | 1,000 | 1,000 |
| 12 | 1.2.5 | Преглед на документацията | milestone | 1d | 2022-04-04 A | 2022-04-04 A | 11 | 100% |  |  |  | start no earlier than 2022-04-04 | QA тестер; Бизнес аналитик; ГПИ Дизайнер; Мениджър на проекта; Разработчик | 40h | 40h | 1,400 | 1,400 |
| 13 | 1.3 | **Разработване - итерация 1** |  | 44d | 2022-04-04 A | 2022-06-02 |  | 66% | 14.99d | 0d |  |  |  | 608h | 363.92h | 18,280 | 10,116.8 |
| 14 | 1.3.2 | **Разработване на функционалности** |  | 20d | 2022-04-05 A | 2022-05-02 A |  | 100% |  |  |  |  |  | 160h | 160h | 4,000 | 4,000 |
| 15 | 1.3.1.1 | Конфигуриране на базата данни |  | 3d | 2022-04-05 A | 2022-04-07 A | 11 | 100% |  |  |  | start no earlier than 2022-04-05 | Разработчик | 24h | 24h | 600 | 600 |
| 16 | 1.3.2.1 | Добавяне на функционалност за регистрация |  | 5d | 2022-04-08 A | 2022-04-14 A | 15 | 100% |  |  |  | finish no earlier than 2022-04-11 | Разработчик | 40h | 40h | 1,000 | 1,000 |
| 17 | 1.3.2.2 | Добавяне на функционалност за вход в системата |  | 6d | 2022-04-15 A | 2022-04-22 A | 16 | 100% |  |  |  | finish no earlier than 2022-04-18 | Разработчик | 48h | 48h | 1,200 | 1,200 |
| 18 | 1.3.2.3 | Добавяне на опция за гласуване |  | 6d | 2022-04-25 A | 2022-05-02 A | 17 | 100% |  |  |  | start no earlier than 2022-04-18 | Разработчик | 48h | 48h | 1,200 | 1,200 |
| 19 | 1.3.3 | **Разработване на уеб компоненти** |  | 17d | 2022-04-05 A | 2022-04-27 A |  | 100% |  |  |  |  |  | 136h | 136h | 3,400 | 3,400 |
| 20 | 1.3.3.1 | Създаване на уеб сървър |  | 5d | 2022-04-05 A | 2022-04-11 A | 11 | 100% |  |  |  | start no earlier than 2022-04-05 | ГПИ Дизайнер | 40h | 40h | 1,000 | 1,000 |
| 21 | 1.3.3.2 | Създаване на страници за достъп до функционалностите |  | 7d | 2022-04-12 A | 2022-04-20 A | 20 | 100% |  |  |  | finish no earlier than 2022-04-19 | ГПИ Дизайнер | 56h | 56h | 1,400 | 1,400 |
| 22 | 1.3.3.3 | Създаване на страници за гласуване |  | 5d | 2022-04-21 A | 2022-04-27 A | 21 | 100% |  |  |  | start no earlier than 2022-04-19 | ГПИ Дизайнер | 40h | 40h | 1,000 | 1,000 |
| 23 | 1.3.4 | **Unit тестване** |  | 27d | 2022-04-04 A | 2022-05-10 |  | 71% | 7.9d | 1d |  |  |  | 96h | 67.92h | 3,840 | 2,716.8 |
| 24 | 1.3.4.1 | Създаване на тестови сценарии за функционалностите |  | 6d | 2022-04-04 A | 2022-04-11 A | 11 | 100% |  |  |  | finish no earlier than 2022-04-11 | QA тестер | 48h | 48h | 1,920 | 1,920 |
| 25 | 1.3.4.2 | Тестване на формите за вход и регистрация |  | 3d | 2022-04-25 A | 2022-04-27 | 16, 17, 20 | 33% | 2.01d | 8.6d | 5d | finish no earlier than 2022-04-27 | QA тестер | 24h | 7.92h | 960 | 316.8 |
| 26 | 1.3.4.3 | Тестване на гласуването |  | 2d | 2022-05-03 A | 2022-05-04 | 18, 21 | 45% | 1.1d | 3.6d | 0d | finish no earlier than 2022-04-14 | QA тестер | 16h | 7.2h | 640 | 288 |
| 27 | 1.3.4.4 | Документиране на резултатите от тестовете |  | 1d | 2022-05-05 A | 2022-05-10 | 25, 26 | 60% | 0.4d | 1d | 0d | finish no earlier than 2022-05-10 | QA тестер | 8h | 4.8h | 320 | 192 |

| ID | WBS | Task | Duration | Start | Finish | Predecessors | Total slack | Free slack | Constraint | Resources | Work | Cost |
| --- | --- | --- | --- | --- | --- | --- | --- | --- | --- | --- | --- | --- |
| 28 | 1.3.5 | **User Acceptance тестване** | 25d | 2022-04-19 | 2022-05-23 |  | 1d |  |  |  | 104h | 4,240 |
| 29 | 1.3.5.1 | Създаване на тестови сценарии | 4d | 2022-04-19 | 2022-04-22 |  | 13d | 12d | finish no earlier than 2022-04-22 | QA тестер | 32h | 1,280 |
| 30 | 1.3.5.2 | Подготвяне на тестова среда | 2d | 2022-05-11 | 2022-05-12 | 29, 27 | 1d | 0d | finish no earlier than 2022-04-26 | QA тестер | 16h | 640 |
| 31 | 1.3.5.3 | Провеждане на UAT | 3d | 2022-05-13 | 2022-05-17 | 30 | 1d | 0d | finish no earlier than 2022-04-29 | QA тестер | 24h | 960 |
| 32 | 1.3.4.4 | Документиране на резултатите | 3d | 2022-05-18 | 2022-05-20 | 31 | 1d | 0d |  | QA тестер | 24h | 960 |
| 33 | 1.3.4.5 | Преглед на резултатите | 1d | 2022-05-23 | 2022-05-23 | 32 | 1d |  |  | Мениджър на проекта | 8h | 400 |
| 34 | 1.3.5 | **Внедряване на софтуера** | 7d | 2022-05-25 | 2022-06-02 |  | 0d |  |  |  | 112h | 2,800 |
| 35 | 1.5.4 | Внедряване на софтуера | 3d | 2022-05-25 | 2022-05-27 | 33 | 0d |  | start no earlier than 2022-05-25 | Разработчик; ГПИ Дизайнер | 48h | 1,200 |
| 36 | 1.3.5.2 | Провеждане на тестове | 3d | 2022-05-30 | 2022-06-01 | 35 | 0d |  |  | ГПИ Дизайнер; Разработчик | 48h | 1,200 |
| 37 | 1.3.5.3 | Документиране на резултатите от тестовете | 1d | 2022-06-02 | 2022-06-02 | 36 | 0d |  |  | ГПИ Дизайнер; Разработчик | 16h | 400 |
| 38 | 1.4 | **Разработване - итерация 2** | 42d | 2022-05-27 | 2022-07-25 |  | 0d |  |  |  | 512h | 16,120 |
| 39 | 1.4.1 | **Разработване на функционалности** | 13d | 2022-06-03 | 2022-06-21 |  | 0d |  |  |  | 104h | 2,600 |
| 40 | 1.4.1.1 | Допълване на базата данни | 3d | 2022-06-03 | 2022-06-07 | 37 | 0d |  | start no earlier than 2022-05-24 | Разработчик | 24h | 600 |
| 41 | 1.4.1.2 | Добавяне на функционалност за докладване на проблем | 4d | 2022-06-08 | 2022-06-13 | 40 | 0d |  |  | Разработчик | 32h | 800 |
| 42 | 1.4.1.1 | Добавяне на FAQ логика | 6d | 2022-06-14 | 2022-06-21 | 41 | 0d |  |  | Разработчик | 48h | 1,200 |
| 43 | 1.4.2 | **Разработване на уеб компоненти** | 10d | 2022-06-03 | 2022-06-16 |  | 3d |  |  |  | 80h | 2,000 |
| 44 | 1.4.2.1 | Създаване на страница за докладване на проблем | 5d | 2022-06-03 | 2022-06-09 | 37 | 3d | 0d | start no earlier than 2022-05-24 | ГПИ Дизайнер | 40h | 1,000 |
| 45 | 1.4.2.1 | Създаване на страница за FAQ | 5d | 2022-06-10 | 2022-06-16 | 44 | 3d |  | finish no earlier than 2022-05-18 | ГПИ Дизайнер | 40h | 1,000 |
| 46 | 1.4.4 | **Unit тестване** | 23d | 2022-05-27 | 2022-06-28 |  | 0d |  |  |  | 112h | 4,480 |
| 47 | 1.4.4.1 | Създаване на тестови сценарии за функционалностите | 4d | 2022-05-27 | 2022-06-01 | 33 | 13d | 8d | start no earlier than 2022-05-27 | QA тестер | 32h | 1,280 |
| 48 | 1.4.3.2 | Тестване на докладване на проблем | 5d | 2022-06-14 | 2022-06-20 | 47, 41 | 5d |  | start no earlier than 2022-05-11 | QA тестер | 40h | 1,600 |
| 49 | 1.4.3.3 | Тестване на докладване на FAQ | 4d | 2022-06-22 | 2022-06-27 | 45, 42 | 0d |  |  | QA тестер | 32h | 1,280 |
| 50 | 1.4.3.4 | Документиране на резултатите | 1d | 2022-06-28 | 2022-06-28 | 48, 49 | 0d |  | finish no earlier than 2022-05-27 | QA тестер | 8h | 320 |
| 51 | 1.4.5 | **User Acceptance тестване** | 13d | 2022-06-29 | 2022-07-15 |  | 0d |  |  |  | 104h | 4,240 |
| 52 | 1.3.5.1 | Създаване на тестови сценарии | 4d | 2022-06-29 | 2022-07-04 | 50 | 0d |  | start no earlier than 2022-06-23 | QA тестер | 32h | 1,280 |
| 53 | 1.3.5.2 | Подготвяне на тестова среда | 2d | 2022-07-05 | 2022-07-06 | 52, 50 | 0d |  | finish no earlier than 2022-05-19 | QA тестер | 16h | 640 |
| 54 | 1.3.5.3 | Провеждане на UAT | 3d | 2022-07-07 | 2022-07-11 | 53 | 0d |  | finish no earlier than 2022-04-29 | QA тестер | 24h | 960 |
| 55 | 1.3.5.4 | Документиране на резултатите | 3d | 2022-07-12 | 2022-07-14 | 54 | 0d |  | start no earlier than 2022-07-06 | QA тестер | 24h | 960 |
| 56 | 1.4.4.5 | Преглед на резултатите | 1d | 2022-07-15 | 2022-07-15 | 55 | 4d | 0d |  | Мениджър на проекта | 8h | 400 |

| ID | WBS | Task | Type | Duration | Start | Finish | Predecessors | Total slack | Free slack | Constraint | Resources | Work | Cost |
| --- | --- | --- | --- | --- | --- | --- | --- | --- | --- | --- | --- | --- | --- |
| 57 | 1.4.5 | **Внедряване на софтуера** |  | 7d | 2022-07-15 | 2022-07-25 |  | 0d |  |  |  | 112h | 2,800 |
| 58 | 1.4.6 | Внедряване на софтуера |  | 3d | 2022-07-15 | 2022-07-19 | 55 | 0d |  | start no earlier than 2022-05-30 | ГПИ Дизайнер; Разработчик | 48h | 1,200 |
| 59 | 1.4.5.2 | Провеждане на тестове |  | 3d | 2022-07-20 | 2022-07-22 | 58 | 0d |  |  | ГПИ Дизайнер; Разработчик | 48h | 1,200 |
| 60 | 1.4.5.3 | Документиране на резултатите от тестовете |  | 1d | 2022-07-25 | 2022-07-25 | 59 | 0d |  |  | ГПИ Дизайнер; Разработчик | 16h | 400 |
| 61 | 1.5 | **Разработване - итерация 3** |  | 41d | 2022-07-18 | 2022-09-12 |  | 0d |  |  |  | 496h | 16,080 |
| 62 | 1.5.1 | **Разработване на функционалности** |  | 9d | 2022-07-26 | 2022-08-05 |  | 0d |  |  |  | 72h | 1,800 |
| 63 | 1.5.1.1 | Добавяне на API за връзка с News Feed услуга |  | 4d | 2022-07-26 | 2022-07-29 | 60 | 0d |  | start no earlier than 2022-07-13 | Разработчик | 32h | 800 |
| 64 | 1.4.2.1 | Добавяне на функционалност за преглед на статистика |  | 5d | 2022-08-01 | 2022-08-05 | 63 | 0d |  | finish no earlier than 2022-05-18 | Разработчик | 40h | 1,000 |
| 65 | 1.5.1 | **Разработване на уеб компоненти** |  | 9d | 2022-07-26 | 2022-08-05 |  | 0d |  |  |  | 72h | 1,800 |
| 66 | 1.5.2.1 | Създаване на страница за преглед на News Feed |  | 4d | 2022-07-26 | 2022-07-29 | 60 | 0d |  | start no earlier than 2022-07-13 | ГПИ Дизайнер | 32h | 800 |
| 67 | 1.4.2.1 | Създаване на страница за преглед на статистика за изборите |  | 5d | 2022-08-01 | 2022-08-05 | 66 | 0d |  | finish no earlier than 2022-05-18 | ГПИ Дизайнер | 40h | 1,000 |
| 68 | 1.5.2 | **Unit тестване** |  | 21d | 2022-07-18 | 2022-08-15 |  | 0d |  |  |  | 136h | 5,440 |
| 69 | 1.4.4.1 | Създаване на тестови сценарии за функционалностите |  | 7d | 2022-07-18 | 2022-07-26 | 56 | 4d | 3d | start no earlier than 2022-07-12 | QA тестер | 56h | 2,240 |
| 70 | 1.5.3.2 | Тестване на News Feed |  | 4d | 2022-08-01 | 2022-08-04 | 63, 69, 66 | 1d |  |  | QA тестер | 32h | 1,280 |
| 71 | 1.5.3.3 | Тестване на преглед на статистика |  | 5d | 2022-08-08 | 2022-08-12 | 64, 70, 67 | 0d |  |  | QA тестер | 40h | 1,600 |
| 72 | 1.5.3.4 | Документиране на резултатите |  | 1d | 2022-08-15 | 2022-08-15 | 71 | 0d |  |  | QA тестер | 8h | 320 |
| 73 | 1.5.3 | **User Acceptance тестване** |  | 13d | 2022-08-16 | 2022-09-01 |  | 0d |  |  |  | 104h | 4,240 |
| 74 | 1.3.5.1 | Създаване на тестови сценарии |  | 4d | 2022-08-16 | 2022-08-19 | 72 | 0d |  | start no earlier than 2022-08-08 | QA тестер | 32h | 1,280 |
| 75 | 1.3.5.2 | Подготвяне на тестова среда |  | 2d | 2022-08-22 | 2022-08-23 | 74 | 0d |  | finish no earlier than 2022-05-19 | QA тестер | 16h | 640 |
| 76 | 1.3.5.3 | Провеждане на UAT |  | 3d | 2022-08-24 | 2022-08-26 | 75 | 0d |  | finish no earlier than 2022-04-29 | QA тестер | 24h | 960 |
| 77 | 1.5.4.4 | Документиране на резултатите |  | 3d | 2022-08-29 | 2022-08-31 | 76 | 0d |  |  | QA тестер | 24h | 960 |
| 78 | 1.5.4.5 | Преглед на резултатите |  | 1d | 2022-09-01 | 2022-09-01 | 77 | 0d |  |  | Мениджър на проекта | 8h | 400 |
| 79 | 1.5.5 | **Внедряване на софтуера** |  | 7d | 2022-09-02 | 2022-09-12 |  | 0d |  |  |  | 112h | 2,800 |
| 80 | 1.5.4 | Внедряване на софтуера |  | 3d | 2022-09-02 | 2022-09-06 | 78 | 0d |  | start no earlier than 2022-08-25 | Разработчик; ГПИ Дизайнер | 48h | 1,200 |
| 81 | 1.5.5.2 | Провеждане на тестове |  | 3d | 2022-09-07 | 2022-09-09 | 80 | 0d |  |  | ГПИ Дизайнер; Разработчик | 48h | 1,200 |
| 82 | 1.5.5.3 | Документиране на резултатите от тестовете |  | 1d | 2022-09-12 | 2022-09-12 | 81 | 0d |  |  | ГПИ Дизайнер; Разработчик | 16h | 400 |
| 83 | 1.5.5 | Представяне на продукта | milestone | 0d | 2022-09-12 | 2022-09-12 | 82 | 0d |  | start no earlier than 2022-08-29 |  |  |  |
