# IT-Project-Plan-Example

Schedule from MS Project, 2015-04-20 to 2016-03-24, costs in $, A marks actual dates.
Hewlett-Packard

## Calendars

- Standard: Mon-Fri 08:00-12:00, 13:00-17:00; Sat-Sun off.

## Resources

| Resource | Rate |
| --- | --- |
| SME | 100 |
| Business Analyst | 100 |
| Developer | 80 |
| QA Tester | 100 |
| Project Manager | 200 |
| Architect | 300 |
| Quality Assurance Manager | 250 |
| Business Manager | 300 |
| Deployment Team | 75 |

## Schedule

| ID | WBS | Task | Duration | Start | Finish | Predecessors | Complete | Remaining | Total slack | Free slack | Resources | Work | Actual work | Cost | Actual cost |
| --- | --- | --- | --- | --- | --- | --- | --- | --- | --- | --- | --- | --- | --- | --- | --- |
| 1 | 1 | **Project Alpha** | 244d | 2015-04-20 A | 2016-03-24 |  | 39% | 149.01d | 0d |  |  | 3432h | 1602h | 402,160 | 219,928 |
| 2 | 1.1 | **Business Case** | 20d | 2015-04-20 A | 2015-05-15 |  | 64% | 7.2d | 3d | 0d |  | 440h | 320h | 67,200 | 50,880 |
| 3 | 1.1.1 | High Level Requirements | 10d | 2015-04-20 A | 2015-05-01 A |  | 100% |  |  |  | SME; Architect; Business Analyst | 240h | 240h | 40,000 | 40,000 |
| 4 | 1.1.2 | Estimation | 5d | 2015-05-04 A | 2015-05-08 | 3 | 40% | 3d | 8d |  | Business Analyst; Developer; QA Tester | 120h | 48h | 11,200 | 4,480 |
| 5 | 1.1.3 | Draft Business Case | 10d | 2015-05-04 A | 2015-05-15 | 3 | 40% | 6d | 3d |  | Project Manager | 80h | 32h | 16,000 | 6,400 |
| 6 | 1.2 | **Analysis** | 28d | 2015-05-18 A | 2015-06-24 |  | 75% | 7d | 128d | 125d |  | 288h | 232h | 31,680 | 26,080 |
| 7 | 1.2.1 | Requirement Gathering | 10d | 2015-05-18 A | 2015-05-29 | 2 | 30% | 7d | 146d |  | Business Analyst | 80h | 24h | 8,000 | 2,400 |
| 8 | 1.2.2 | Draft Requirements Document | 15d | 2015-06-01 A | 2015-06-19 A | 7 | 100% |  |  |  | Business Analyst | 120h | 120h | 12,000 | 12,000 |
| 9 | 1.2.3 | Requirements Review | 2d | 2015-06-22 A | 2015-06-23 A | 8 | 100% |  |  |  | Business Analyst; SME; Developer; QA Tester; Architect | 80h | 80h | 10,880 | 10,880 |
| 10 | 1.2.4 | Requirements Sign-off | 1d | 2015-06-24 A | 2015-06-24 A | 9 | 100% |  |  |  | SME | 8h | 8h | 800 | 800 |
| 11 | 1.3 | **Design** | 35d | 2015-06-25 A | 2015-08-12 |  | 89% | 4d | 28.35d | 0d |  | 600h | 504h | 112,800 | 97,440 |
| 12 | 1.3.1 | High Level Design Document | 15d | 2015-06-25 A | 2015-07-15 A | 6 | 100% |  |  |  | Architect | 120h | 120h | 36,000 | 36,000 |
| 13 | 1.3.2 | Design Review | 20d | 2015-07-16 A | 2015-08-12 | 12 | 80% | 4d | 28.35d |  | Architect; Developer; QA Tester | 480h | 384h | 76,800 | 61,440 |
| 14 | 1.4 | **Build** | 76d | 2015-08-13 A | 2015-11-26 |  | 45% | 41.8d | 0d |  |  | 968h | 453.6h | 77,440 | 36,288 |
| 15 | 1.4.1 | **Component 1** | 70d | 2015-08-13 A | 2015-11-18 |  | 41% | 41.65d | 0d |  |  | 560h | 226.8h | 44,800 | 18,144 |
| 16 | 1.4.1.1 | Sub Component | 40d | 2015-08-13 A | 2015-10-07 | 11 | 71% | 11.65d | 0d |  | Developer | 320h | 226.8h | 25,600 | 18,144 |
| 17 | 1.4.1.2 | Unit Testing | 30d | 2015-10-08 | 2015-11-18 | 16 |  |  | 0d |  | Developer | 240h |  | 19,200 |  |
| 18 | 1.4.2 | **Component 2** | 50d | 2015-08-13 A | 2015-10-21 |  | 57% | 21.65d | 20d |  |  | 400h | 226.8h | 32,000 | 18,144 |
| 19 | 1.4.2.1 | Sub Component | 20d | 2015-08-13 A | 2015-09-09 A | 11 | 100% |  |  |  | Developer | 160h | 160h | 12,800 | 12,800 |
| 20 | 1.4.2.2 | Unit Testing | 30d | 2015-09-10 A | 2015-10-21 | 19 | 28% | 21.65d | 20d |  | Developer | 240h | 66.8h | 19,200 | 5,344 |
| 21 | 1.4.3 | Integration Testing | 5d | 2015-11-19 | 2015-11-25 | 15, 16, 17, 18, 19, 20 |  |  | 0d |  |  |  |  |  |  |
| 22 | 1.4.4 | Configure QA Environment | 1d | 2015-11-26 | 2015-11-26 | 21 |  |  | 0d |  | Developer | 8h |  | 640 |  |
| 23 | 1.5 | **Quality Assurance Library** | 21d | 2015-06-25 A | 2015-07-23 |  | 55% | 9.45d | 90d |  |  | 176h | 92.4h | 18,800 | 9,240 |
| 24 | 1.5.1 | Requirement Analysis | 5d | 2015-06-25 A | 2015-07-01 A | 6 | 100% |  |  |  | QA Tester | 40h | 40h | 4,000 | 4,000 |
| 25 | 1.5.2 | Draft Test Plan and Test Cases | 10d | 2015-07-02 A | 2015-07-15 | 24 | 66% | 3.45d | 90d | 0d | QA Tester | 80h | 52.4h | 8,000 | 5,240 |
| 26 | 1.5.3 | Review Test Case Library | 5d | 2015-07-16 | 2015-07-22 | 25 |  |  | 90d | 0d | Business Analyst | 40h |  | 4,000 |  |
| 27 | 1.5.4 | Sign-off Test Case Library | 1d | 2015-07-23 | 2015-07-23 | 26 |  |  | 90d |  | Business Analyst; Quality Assurance Manager | 16h |  | 2,800 |  |

| ID | WBS | Task | Type | Duration | Start | Finish | Predecessors | Total slack | Constraint | Resources | Work | Cost |
| --- | --- | --- | --- | --- | --- | --- | --- | --- | --- | --- | --- | --- |
| 28 | 1.6 | **Quality Assurance Test** |  | 42d | 2015-11-27 | 2016-01-25 |  | 0d |  |  | 336h | 34,640 |
| 29 | 1.6.1 | Test Execution |  | 30d | 2015-11-27 | 2016-01-07 | 23, 22 | 0d |  | QA Tester | 240h | 24,000 |
| 30 | 1.6.2 | Performance Testing |  | 10d | 2016-01-08 | 2016-01-21 | 29 | 0d |  | QA Tester | 80h | 8,000 |
| 31 | 1.6.3 | QA Sign-off |  | 1d | 2016-01-22 | 2016-01-22 | 30 | 0d |  | Quality Assurance Manager | 8h | 2,000 |
| 32 | 1.6.4 | Configure UA Environment |  | 1d | 2016-01-25 | 2016-01-25 | 31 | 0d |  | Developer | 8h | 640 |
| 33 | 1.7 | **User Acceptance Testing** |  | 54d | 2015-12-17 | 2016-03-01 |  | 0d |  |  | 408h | 42,400 |
| 34 | 1.7.1 | Draft Test Cases |  | 25d | 2015-12-17 | 2016-01-20 | 6 | 3d | start no earlier than 2015-12-17 | SME | 200h | 20,000 |
| 35 | 1.7.2 | Execute Test Cases |  | 25d | 2016-01-26 | 2016-02-29 | 32, 34 | 0d |  | SME | 200h | 20,000 |
| 36 | 1.7.3 | Sign-off UAT |  | 1d | 2016-03-01 | 2016-03-01 | 35 | 0d |  | Business Manager | 8h | 2,400 |
| 37 | 1.8 | Implementation Planning |  | 5d | 2015-12-17 | 2015-12-23 |  | 49d | start no earlier than 2015-12-17 | Developer; Deployment Team | 80h | 6,200 |
| 38 | 1.9 | **Pre-Production Testing** |  | 5d | 2016-03-02 | 2016-03-08 |  | 0d |  |  | 40h | 3,200 |
| 39 | 1.9.1 | Configure Pre-Production |  | 1d | 2016-03-02 | 2016-03-02 | 36, 37 | 0d |  | Developer | 8h | 640 |
| 40 | 1.9.2 | Test Pre-Production |  | 4d | 2016-03-03 | 2016-03-08 | 39 | 0d |  | Developer | 32h | 2,560 |
| 41 | 1.10 | **Alpha Go Live** |  | 2d | 2016-03-09 | 2016-03-10 |  | 0d |  |  | 16h | 1,400 |
| 42 | 1.10.1 | Configure Production |  | 1d | 2016-03-09 | 2016-03-09 | 40 | 0d |  | Deployment Team | 8h | 600 |
| 43 | 1.10.2 | Verify Prouduction |  | 1d | 2016-03-10 | 2016-03-10 | 42 | 0d |  | SME | 8h | 800 |
| 44 | 1.10.3 | Go Live | milestone | 0d | 2016-03-10 | 2016-03-10 | 43 | 0d |  | Project Manager |  |  |
| 45 | 1.11 | Post Go Live Support | manual | 10d | 2016-03-11 | 2016-03-24 | 41 |  |  | Developer | 80h | 6,400 |
