# SarS_Vision

Schedule from MS Project, 2022-01-13 to 2022-02-22, costs in лв., A marks actual dates.

## Calendars

- Standard: Mon-Fri 08:00-12:00, 13:00-17:00; Sat-Sun off.

## Resources

| Resource | Rate |
| --- | --- |
| Developer 1 | 30 |
| Developer 2 | 30 |
| Developer 3 | 30 |
| Quality assurance 1 | 20 |
| Quality assurance 2 | 20 |
| Business analyst | 25 |
| Project manager | 38 |

## Schedule

| ID | WBS | Task | Type | Duration | Start | Finish | Predecessors | Complete | Constraint | Resources | Work | Actual work | Cost | Actual cost |
| --- | --- | --- | --- | --- | --- | --- | --- | --- | --- | --- | --- | --- | --- | --- |
| 1 | 1 | **Project** |  | 29d | 2022-01-13 08:00 A | 2022-02-22 17:00 A |  | 100% |  |  | 541h | 541h | 15,388 | 15,388 |
| 2 | 1.1 | Среща с клиентите за събиране на изискванията | manual | 2d | 2022-01-13 08:00 A | 2022-01-14 17:00 A |  | 100% | start no earlier than 2022-01-13 08:00 | Developer 1; Business analyst; Project manager | 16h | 16h | 480 | 480 |
| 3 | 1.2 | Документиране на изискванията | manual | 2d | 2022-01-17 08:00 A | 2022-01-18 17:00 A | 2 | 100% |  | Business analyst; Project manager | 32h | 32h | 1,008 | 1,008 |
| 4 | 1.3 | Изработване на Use case диаграма | manual | 4h | 2022-01-19 08:00 A | 2022-01-19 12:00 A | 3 | 100% |  | Developer 2 | 4h | 4h | 120 | 120 |
| 5 | 1.4 | Изработване на Activity диаграма | manual | 4h | 2022-01-19 08:00 A | 2022-01-19 12:00 A | 3 | 100% |  | Developer 2 | 4h | 4h | 120 | 120 |
| 6 | 1.5 | Изработване на Class диаграма | manual | 4h | 2022-01-19 08:00 A | 2022-01-19 12:00 A | 3 | 100% |  | Developer 1 | 4h | 4h | 120 | 120 |
| 7 | 1.6 | Изработване на Entity диаграма | manual | 4h | 2022-01-19 08:00 A | 2022-01-19 12:00 A | 3 | 100% |  | Developer 1 | 4h | 4h | 120 | 120 |
| 8 | 1.7 | Разработка на прототип | manual | 3d | 2022-01-20 08:00 A | 2022-01-24 17:00 A | 4, 5, 6, 7 | 100% |  | Developer 1; Developer 2 | 48h | 48h | 1,440 | 1,440 |
| 9 | 1.8 | Архитектура на база данни | manual | 3d | 2022-01-20 08:00 A | 2022-01-24 17:00 A | 4, 5, 6, 7 | 100% |  | Developer 3 | 24h | 24h | 720 | 720 |
| 10 | 1.9 | Разработване на регистрационна форма и ролите на потребителите | manual | 4d | 2022-01-25 08:00 A | 2022-01-28 17:00 A | 8, 9 | 100% |  | Developer 3 | 32h | 32h | 960 | 960 |
| 11 | 1.10 | Свързване на регистрационната форма с базата данни | manual | 4h | 2022-01-31 08:00 A | 2022-01-31 12:00 A | 10 | 100% |  | Developer 3 | 4h | 4h | 120 | 120 |
| 12 | 1.11 | Тестване на функционалността за регистрация BE + FE | manual | 4h | 2022-01-31 08:00 A | 2022-01-31 12:00 A | 11 | 100% |  | Quality assurance 1 | 4h | 4h | 80 | 80 |
| 13 | 1.12 | Разработване на логин форма BE + FE | manual | 1d | 2022-01-31 08:00 A | 2022-01-31 17:00 A | 8, 9 | 100% |  | Developer 1 | 8h | 8h | 240 | 240 |
| 14 | 1.13 | Тестване на логин формата | manual | 1d | 2022-02-01 08:00 A | 2022-02-01 17:00 A | 13 | 100% |  | Quality assurance 2 | 8h | 8h | 160 | 160 |
| 15 | 1.14 | Тестване на връзките м/у логин и регистрационна форма FE + BE | manual | 4h | 2022-02-02 08:00 A | 2022-02-02 12:00 A | 12, 14 | 100% |  | Quality assurance 1; Quality assurance 2 | 8h | 8h | 160 | 160 |
| 16 | 1.15 | Разработка на страница за преглед на всички локации | manual | 2d | 2022-01-25 08:00 A | 2022-01-26 17:00 A | 8, 9 | 100% |  | Developer 2 | 16h | 16h | 480 | 480 |
| 17 | 1.16 | Разработка на страница за създаване и редактиране на локации FE + BE | manual | 2d | 2022-02-01 08:00 A | 2022-02-02 17:00 A | 13 | 100% |  | Developer 1; Developer 3 | 32h | 32h | 960 | 960 |
| 18 | 1.17 | Свързване на резултатите от преглед на всички локации с базата данни | manual | 4h | 2022-01-27 08:00 A | 2022-01-27 12:00 A | 16 | 100% |  | Developer 2 | 4h | 4h | 120 | 120 |
| 19 | 1.18 | Тестване на формата за създаване и редактиране на локации | manual | 1d | 2022-02-03 08:00 A | 2022-02-03 17:00 A | 17 | 100% |  | Quality assurance 1 | 8h | 8h | 160 | 160 |
| 20 | 1.19 | Разработване на функционалност за изтриване на локация | manual | 4h | 2022-01-28 08:00 A | 2022-01-28 12:00 A | 18 | 100% |  | Developer 2 | 4h | 4h | 120 | 120 |
| 21 | 1.20 | Свързване на функционалността за изтриване с базата данни | manual | 4h | 2022-01-28 08:00 A | 2022-01-28 12:00 A | 20 | 100% |  | Developer 2 | 4h | 4h | 120 | 120 |
| 22 | 1.21 | Тестване на функционалността за изтриване | manual | 4h | 2022-01-31 08:00 A | 2022-01-31 12:00 A | 21 | 100% |  | Quality assurance 2 | 4h | 4h | 80 | 80 |
| 23 | 1.22 | Разработване на страница за преглед детайли на локация | manual | 1d | 2022-02-03 08:00 A | 2022-02-03 17:00 A | 17 | 100% |  | Developer 3 | 8h | 8h | 240 | 240 |
| 24 | 1.23 | Свързване на страницата за преглед детайли на локация с базата данни | manual | 4h | 2022-02-04 08:00 A | 2022-02-04 12:00 A | 23 | 100% |  | Developer 1 | 4h | 4h | 120 | 120 |
| 25 | 1.24 | Тестване на страницата за преглед детайли на локация | manual | 1h | 2022-02-04 08:00 A | 2022-02-04 09:00 A | 24 | 100% |  | Quality assurance 1 | 1h | 1h | 20 | 20 |
| 26 | 1.25 | Тестване на цялото приложение | manual | 2d | 2022-02-07 08:00 A | 2022-02-08 17:00 A | 25 | 100% |  | Quality assurance 2; Quality assurance 1 | 16h | 16h | 320 | 320 |
| 27 | 1.26 | Създаване на API тестове | manual | 2d | 2022-02-07 08:00 A | 2022-02-08 17:00 A | 24 | 100% |  | Developer 1; Developer 2 | 32h | 32h | 960 | 960 |
| 28 | 1.27 | Създаване на FE тестове | manual | 2d | 2022-02-04 08:00 A | 2022-02-07 17:00 A | 23 | 100% |  | Developer 3 | 16h | 16h | 480 | 480 |
| 29 | 1.28 | Документация на проекта (DEVs) | manual | 2d | 2022-02-09 08:00 A | 2022-02-10 17:00 A | 27, 28 | 100% |  | Developer 1; Developer 2 | 32h | 32h | 960 | 960 |
| 30 | 1.29 | Документация на проекта (QAs + BA) | manual | 2d | 2022-02-09 08:00 A | 2022-02-10 17:00 A | 26 | 100% |  | Business analyst; Quality assurance 1 | 32h | 32h | 720 | 720 |
| 31 | 1.30 | Подготвяне на live средата | manual | 5d | 2022-02-09 08:00 A | 2022-02-15 17:00 A | 26 | 100% |  | Developer 3 | 40h | 40h | 1,200 | 1,200 |
| 32 | 1.31 | Свързване и качване на live средата | manual | 3d | 2022-02-16 08:00 A | 2022-02-18 17:00 A | 31 | 100% |  | Developer 1; Developer 2; Developer 3 | 72h | 72h | 2,160 | 2,160 |
| 33 | 1.32 | Преглед и тестване на live средата | manual | 2d | 2022-02-21 08:00 A | 2022-02-22 17:00 A | 32 | 100% |  | Quality assurance 1; Quality assurance 2 | 16h | 16h | 320 | 320 |
