# Brave Buddies - SaveALife

Schedule from MS Project, 2022-01-03 to 2022-05-25, costs in лв., A marks actual dates.

## Calendars

- Standard: Mon-Fri 08:00-12:00, 13:00-17:00; Sat-Sun off.

## Resources

| Resource | Rate |
| --- | --- |
| Project Manager | 35 |
| Product Owner | 30 |
| UX/UI Designer | 25 |
| Business analyst | 25 |
| QA | 25 |
| Software Architect | 35 |
| Full Stack Developer 1 | 30 |
| Full Stack Developer 2 | 30 |
| DevOps 1 | 40 |
| DevOps 2 | 40 |
| Azure PaaS | 3000 |

## Schedule

| ID | WBS | Task | Duration | Start | Finish | Predecessors | Complete | Remaining | Baseline start | Baseline finish | Baseline duration | Total slack | Free slack | Constraint | Resources | Work | Actual work | Cost | Baseline cost | Actual cost |
| --- | --- | --- | --- | --- | --- | --- | --- | --- | --- | --- | --- | --- | --- | --- | --- | --- | --- | --- | --- | --- |
| 1 | 1 | **Анализ и дефиниция** | 16d | 2022-01-03 A | 2022-01-24 A |  | 100% |  | 2022-01-03 | 2022-01-24 | 16d |  |  |  |  | 152h | 152h | 4,160 | 4,160 | 4,160 |
| 2 | 1.1 | **Планиране** | 6d | 2022-01-03 A | 2022-01-10 A |  | 100% |  | 2022-01-03 | 2022-01-10 | 6d |  |  |  |  | 72h | 72h | 1,960 | 1,960 | 1,960 |
| 3 | 1.1.1 | Анализ на проблема | 3d | 2022-01-03 A | 2022-01-05 A |  | 100% |  | 2022-01-03 | 2022-01-05 | 3d |  |  |  | Business analyst | 24h | 24h | 600 | 600 | 600 |
| 4 | 1.1.2 | Изготвяне на предватителна спецификация на изискванията | 2d | 2022-01-06 A | 2022-01-07 A | 3 | 100% |  | 2022-01-06 | 2022-01-07 | 2d |  |  | finish no earlier than 2022-01-06 | Business analyst; Product Owner | 32h | 32h | 880 | 880 | 880 |
| 5 | 1.1.3 | Определяне на цената и риска | 1d | 2022-01-10 A | 2022-01-10 A | 4 | 100% |  | 2022-01-10 | 2022-01-10 | 1d |  |  |  | Business analyst; Project Manager | 16h | 16h | 480 | 480 | 480 |
| 6 | 1.2 | **Дефиниция на системата** | 10d | 2022-01-11 A | 2022-01-24 A | 2 | 100% |  | 2022-01-11 | 2022-01-24 | 10d |  |  |  |  | 80h | 80h | 2,200 | 2,200 | 2,200 |
| 7 | 1.2.1 | Пълна спецификация на изискванията | 5d | 2022-01-11 A | 2022-01-17 A | 2 | 100% |  | 2022-01-11 | 2022-01-17 | 5d |  |  |  | Product Owner; Business analyst | 40h | 40h | 1,200 | 1,200 | 1,200 |
| 8 | 1.2.2 | Прототип на потребителския интерфейс | 5d | 2022-01-18 A | 2022-01-24 A | 7 | 100% |  | 2022-01-18 | 2022-01-24 | 5d |  |  |  | UX/UI Designer | 40h | 40h | 1,000 | 1,000 | 1,000 |
| 9 | 2 | **Проектиране** | 14d | 2022-01-25 A | 2022-02-11 A | 1 | 100% |  | 2022-01-25 | 2022-02-11 | 14d |  |  |  |  | 432h | 432h | 14,720 | 14,720 | 14,720 |
| 10 | 2.1 | **Изготвяне на Софтуерната архитектура** | 10d | 2022-01-25 A | 2022-02-07 A | 1 | 100% |  | 2022-01-25 | 2022-02-07 | 10d |  |  |  |  | 400h | 400h | 13,600 | 13,600 | 13,600 |
| 11 | 2.1.1 | Определяне на Frontend технологии | 5d | 2022-01-25 A | 2022-01-31 A | 1 | 100% |  | 2022-01-25 | 2022-01-31 | 5d |  |  |  | Software Architect; UX/UI Designer | 80h | 80h | 2,400 | 2,400 | 2,400 |
| 12 | 2.1.2 | Определяне на Backend технологии | 5d | 2022-01-25 A | 2022-01-31 A | 1 | 100% |  | 2022-01-25 | 2022-01-31 | 5d |  |  |  | Full Stack Developer 1; Software Architect | 80h | 80h | 2,600 | 2,600 | 2,600 |
| 13 | 2.1.3 | Определяне на подходяща база от данни | 5d | 2022-01-25 A | 2022-01-31 A | 1 | 100% |  | 2022-01-25 | 2022-01-31 | 5d |  |  |  | Full Stack Developer 2; Software Architect | 80h | 80h | 2,600 | 2,600 | 2,600 |
| 14 | 2.1.4 | Планиране на стратегия за depoymеnt | 5d | 2022-02-01 A | 2022-02-07 A | 1, 11, 12, 13 | 100% |  | 2022-02-01 | 2022-02-07 | 5d |  |  |  | DevOps 1; DevOps 2; Project Manager; Software Architect | 160h | 160h | 6,000 | 6,000 | 6,000 |
| 15 | 2.2 | **Изготвяне на план за разработката** | 4d | 2022-02-08 A | 2022-02-11 A | 10 | 100% |  | 2022-02-08 | 2022-02-11 | 4d |  |  |  |  | 32h | 32h | 1,120 | 1,120 | 1,120 |
| 16 | 2.2.1 | Създаване на Use case диаграма | 1d | 2022-02-08 A | 2022-02-08 A | 10, 14 | 100% |  | 2022-02-08 | 2022-02-08 | 1d |  |  |  | Software Architect | 8h | 8h | 280 | 280 | 280 |
| 17 | 2.2.2 | Създаване на Activity диаграма/и | 1d | 2022-02-09 A | 2022-02-09 A | 16 | 100% |  | 2022-02-09 | 2022-02-09 | 1d |  |  |  | Software Architect | 8h | 8h | 280 | 280 | 280 |
| 18 | 2.2.3 | Създаване на Class диаграма | 1d | 2022-02-10 A | 2022-02-10 A | 17 | 100% |  | 2022-02-10 | 2022-02-10 | 1d |  |  |  | Software Architect | 8h | 8h | 280 | 280 | 280 |
| 19 | 2.2.4 | Създаване ER диаграма | 1d | 2022-02-11 A | 2022-02-11 A | 18 | 100% |  | 2022-02-11 | 2022-02-11 | 1d |  |  |  | Software Architect | 8h | 8h | 280 | 280 | 280 |
| 20 | 3 | **Разработка** | 24d | 2022-02-14 A | 2022-03-17 | 9 | 22% | 18.81d | 2022-02-14 | 2022-03-17 | 24d | 0d |  |  |  | 248h | 53.6h | 7,440 | 7,440 | 1,608 |
| 21 | 3.1 | Създаване и конфигуриране на базата данни | 3d | 2022-02-14 A | 2022-02-16 | 9 | 80% | 0.6d | 2022-02-14 | 2022-02-16 | 3d | 1.5d | 0d |  | Full Stack Developer 2 | 24h | 19.2h | 720 | 720 | 576 |
| 22 | 3.2 | Реализация на функционалност за регистрация на доброволци | 3d | 2022-02-17 A | 2022-02-21 | 21 | 50% | 1.5d | 2022-02-17 | 2022-02-21 | 3d | 1.5d | 0d |  | Full Stack Developer 2 | 24h | 12h | 720 | 720 | 360 |
| 23 | 3.3 | Реализация на функционалност за регистрация на медицински лица | 3d | 2022-02-22 A | 2022-02-24 | 22 | 50% | 1.5d | 2022-02-22 | 2022-02-24 | 3d | 0.6d | 0d |  | Full Stack Developer 1 | 24h | 12h | 720 | 720 | 360 |
| 24 | 3.4 | Реализация на функционалност за вход в системата | 2d | 2022-02-25 A | 2022-02-28 | 22, 23 | 30% | 1.4d | 2022-02-25 | 2022-02-28 | 2d | 0d |  |  | Full Stack Developer 1 | 16h | 4.8h | 480 | 480 | 144 |
| 25 | 3.5 | Реализация на функционалност за правене на дарения | 7d | 2022-03-01 A | 2022-03-09 | 24 | 10% | 6.3d | 2022-03-01 | 2022-03-09 | 7d | 1d |  |  | Full Stack Developer 2 | 56h | 5.6h | 1,680 | 1,680 | 168 |
| 26 | 3.6 | Реализация на функционалност за планиране на събитие | 2d | 2022-03-01 | 2022-03-02 | 24 |  |  | 2022-03-01 | 2022-03-02 | 2d | 0d |  |  | Full Stack Developer 1 | 16h |  | 480 | 480 |  |
| 27 | 3.7 | Реализация на функционалност за записване за събитие | 2d | 2022-03-03 | 2022-03-04 | 26 |  |  | 2022-03-03 | 2022-03-04 | 2d | 0d |  |  | Full Stack Developer 1 | 16h |  | 480 | 480 |  |
| 28 | 3.8 | Реализация на функционалност за разглеждане на предоставени материали и събития | 2d | 2022-03-07 | 2022-03-08 | 27 |  |  | 2022-03-07 | 2022-03-08 | 2d | 0d |  |  | Full Stack Developer 1 | 16h |  | 480 | 480 |  |
| 29 | 3.9 | Реализация на функционалност за добавяне на обучителни материали | 2d | 2022-03-09 | 2022-03-10 | 28 |  |  | 2022-03-09 | 2022-03-10 | 2d | 0d |  |  | Full Stack Developer 1 | 16h |  | 480 | 480 |  |
| 30 | 3.10 | Работа по нефункционални изисквания | 5d | 2022-03-11 | 2022-03-17 | 29, 25 |  |  | 2022-03-11 | 2022-03-17 | 5d | 0d |  |  | Full Stack Developer 2 | 40h |  | 1,200 | 1,200 |  |

| ID | WBS | Task | Type | Duration | Start | Finish | Predecessors | Complete | Baseline start | Baseline finish | Baseline duration | Total slack | Constraint | Resources | Work | Cost | Baseline cost |
| --- | --- | --- | --- | --- | --- | --- | --- | --- | --- | --- | --- | --- | --- | --- | --- | --- | --- |
| 31 | 4 | **Тестване** |  | 24d | 2022-03-18 | 2022-04-20 | 20 |  | 2022-03-18 | 2022-04-20 | 24d | 0d |  |  | 192h | 4,800 | 4,800 |
| 32 | 4.1 | Разработка на стратегия за тестване |  | 3d | 2022-03-18 | 2022-03-22 | 20 |  | 2022-03-18 | 2022-03-22 | 3d | 0d |  | QA | 24h | 600 | 600 |
| 33 | 4.2 | Компонентно (Unit) тестване |  | 3d | 2022-03-23 | 2022-03-25 | 32 |  | 2022-03-23 | 2022-03-25 | 3d | 0d |  | QA | 24h | 600 | 600 |
| 34 | 4.3 | Интеграционно тестване |  | 3d | 2022-03-28 | 2022-03-30 | 33 |  | 2022-03-28 | 2022-03-30 | 3d | 0d |  | QA | 24h | 600 | 600 |
| 35 | 4.4 | Системно тестване |  | 3d | 2022-03-31 | 2022-04-04 | 34 |  | 2022-03-31 | 2022-04-04 | 3d | 0d |  | QA | 24h | 600 | 600 |
| 36 | 4.5 | **User Acceptance тестване** |  | 9d | 2022-04-05 | 2022-04-15 | 35 |  | 2022-04-05 | 2022-04-15 | 9d | 0d |  |  | 72h | 1,800 | 1,800 |
| 37 | 4.5.1 | Alpha тестове |  | 4d | 2022-04-05 | 2022-04-08 | 35 |  | 2022-04-05 | 2022-04-08 | 4d | 0d |  | QA | 32h | 800 | 800 |
| 38 | 4.5.2 | Beta тестове |  | 5d | 2022-04-11 | 2022-04-15 | 37 |  | 2022-04-11 | 2022-04-15 | 5d | 0d |  | QA | 40h | 1,000 | 1,000 |
| 39 | 4.6 | Изготвяне на документация след проведените тестове |  | 3d | 2022-04-18 | 2022-04-20 | 36, 38 |  | 2022-04-18 | 2022-04-20 | 3d | 0d |  | QA | 24h | 600 | 600 |
| 40 | 5 | **Deployment** |  | 4d | 2022-04-21 | 2022-04-26 | 31 |  | 2022-04-21 | 2022-04-26 | 4d | 0d |  |  | 64h | 5,560 | 5,560 |
| 41 | 5.1 | **Работа с Azure Paas** |  | 4d | 2022-04-21 | 2022-04-26 | 31 |  | 2022-04-21 | 2022-04-26 | 4d | 0d |  | Azure PaaS | 64h | 5,560 | 5,560 |
| 42 | 5.1.1 | Deploy на beckend |  | 4d | 2022-04-21 | 2022-04-26 | 31 |  | 2022-04-21 | 2022-04-26 | 4d | 0d |  | DevOps 1 | 32h | 1,280 | 1,280 |
| 43 | 5.1.2 | Deploy на frontend |  | 4d | 2022-04-21 | 2022-04-26 | 31 |  | 2022-04-21 | 2022-04-26 | 4d | 0d | start no earlier than 2022-04-21 | DevOps 2 | 32h | 1,280 | 1,280 |
| 44 | 6 | **Документация** |  | 7d | 2022-04-27 | 2022-05-05 | 40 |  | 2022-04-27 | 2022-05-05 | 7d | 0d |  |  | 168h | 4,760 | 4,760 |
| 45 | 6.1 | Създаване на ръководство за потребителя |  | 7d | 2022-04-27 | 2022-05-05 | 40 |  | 2022-04-27 | 2022-05-05 | 7d | 0d |  | Business analyst | 56h | 1,400 | 1,400 |
| 46 | 6.2 | Създаване на подробна документация, която ще се използва от поддръжката |  | 7d | 2022-04-27 | 2022-05-05 | 40 |  | 2022-04-27 | 2022-05-05 | 7d | 0d |  | Full Stack Developer 1; Full Stack Developer 2 | 112h | 3,360 | 3,360 |
| 47 | 7 | **Поддръжка** |  | 14d | 2022-05-06 | 2022-05-25 | 44 |  | 2022-05-06 | 2022-05-25 | 14d | 0d |  |  | 224h | 7,280 | 7,280 |
| 48 | 7.1 | Получаване на обратна връзка от първите потребителите |  | 14d | 2022-05-06 | 2022-05-25 |  |  | 2022-05-06 | 2022-05-25 | 14d | 0d |  | Product Owner; Project Manager | 224h | 7,280 | 7,280 |
| 49 | 8 | Сключване на споразумение за създаване на проекта | milestone | 0d | 2022-01-24 A | 2022-01-24 A |  | 100% | 2022-01-24 | 2022-01-24 | 0d |  |  |  |  |  |  |
| 50 | 9 | Завършена Софтуерна архитектура | milestone | 0d | 2022-02-11 A | 2022-02-11 A |  | 100% | 2022-02-11 | 2022-02-11 | 0d |  | finish no earlier than 2022-02-11 |  |  |  |  |
| 51 | 10 | Приключване на разработката на първата версия | milestone | 0d | 2022-03-17 | 2022-03-17 |  |  | 2022-03-17 | 2022-03-17 | 0d | 50d | start no earlier than 2022-03-17 |  |  |  |  |
| 52 | 11 | Предаване на тествания продукт за deployment | milestone | 0d | 2022-04-20 | 2022-04-20 |  |  | 2022-04-20 | 2022-04-20 | 0d | 26d | start no earlier than 2022-04-20 |  |  |  |  |
| 53 | 12 | Продуктът трябва да може да бъде достъпен онлайн | milestone | 0d | 2022-04-26 | 2022-04-26 |  |  | 2022-04-26 | 2022-04-26 | 0d | 22d | start no earlier than 2022-04-26 |  |  |  |  |
| 54 | 13 | Завършена първа версия на документацията | milestone | 0d | 2022-05-05 | 2022-05-05 |  |  | 2022-05-05 | 2022-05-05 | 0d | 15d | start no earlier than 2022-05-05 |  |  |  |  |
