# MSF Application Development

Schedule from MS Project, 2000-01-03 to 2001-02-16.

## Calendars

- Standard: Mon-Fri 08:00-12:00, 13:00-17:00; Sat-Sun off.

## Resources

| Resource |
| --- |
| Program Management |
| Product Management |
| Development |
| Testing |
| Logistics Management |
| User Education |
| Support Organization |
| Customer |

## Schedule

| ID | WBS | Task | Type | Duration | Start | Finish | Predecessors | Total slack | Free slack | Resources | Work |
| --- | --- | --- | --- | --- | --- | --- | --- | --- | --- | --- | --- |
| 1 | 1 | **Project Kick-Off** |  | 6d | 2000-01-03 | 2000-01-10 |  | 0d |  | Product Management | 368h |
| 2 | 1.1 | **Form Team** |  | 6d | 2000-01-03 | 2000-01-10 |  | 0d |  |  | 320h |
| 3 | 1.1.1 | Define team roles |  | 2d | 2000-01-03 | 2000-01-04 |  | 0d |  | Program Management; Product Management; Development; Testing; Logistics Management | 80h |
| 4 | 1.1.2 | Identify required skills |  | 2d | 2000-01-03 | 2000-01-04 |  | 0d |  | Program Management; Product Management; Development; Testing; Logistics Management | 80h |
| 5 | 1.1.3 | Identify resources |  | 2d | 2000-01-05 | 2000-01-06 | 4, 3 | 0d |  | Program Management; Product Management; Development; Testing; Logistics Management | 80h |
| 6 | 1.1.4 | Assign roles to resources |  | 2d | 2000-01-07 | 2000-01-10 | 5 | 0d |  | Program Management; Product Management; Development; Testing; Logistics Management | 80h |
| 7 | 1.1.5 | Team formed | milestone | 0d | 2000-01-10 | 2000-01-10 | 6 | 0d |  |  |  |
| 8 | 2 | **Envisioning** |  | 44d | 2000-01-11 | 2000-03-10 | 7 | 0d |  | Product Management | 1222.4h |
| 9 | 2.1 | Define preliminary business requirements (ongoing) |  | 29d | 2000-01-11 | 2000-02-18 | 7 | 260d |  | Product Management [50%]; Program Management [20%] | 162.4h |
| 10 | 2.2 | Risk management |  | 1d | 2000-01-11 | 2000-01-11 | 7 | 43d |  |  |  |
| 11 | 2.3 | **Define Project Structure** |  | 9d | 2000-01-11 | 2000-01-21 | 7 | 35d |  |  | 156h |
| 12 | 2.3.1 | Define project tracking process |  | 5d | 2000-01-11 | 2000-01-17 |  | 39d | 4d | Program Management [25%]; Product Management [25%]; User Education [25%]; Testing [25%]; Development [25%]; Logistics Management [25%] | 60h |
| 13 | 2.3.2 | Define problem resolution process |  | 4d | 2000-01-11 | 2000-01-14 |  | 40d | 5d | Program Management [25%]; Development [25%]; Testing [25%] | 24h |
| 14 | 2.3.3 | Define issue tracking process |  | 3d | 2000-01-11 | 2000-01-13 |  | 35d | 0d | Development [25%]; Testing [25%]; Program Management [50%] | 24h |
| 15 | 2.3.4 | Define change control procedures |  | 4d | 2000-01-14 | 2000-01-19 | 14 | 35d | 0d | Testing [25%]; Program Management [25%]; Development [25%]; Product Management [25%] | 32h |
| 16 | 2.3.5 | Define accountability and expectations |  | 2d | 2000-01-20 | 2000-01-21 | 15 | 35d | 0d | Program Management [50%]; Product Management [50%] | 16h |
| 17 | 2.3.6 | Project structure determined | milestone | 0d | 2000-01-21 | 2000-01-21 | 12, 13, 16 | 35d |  |  |  |
| 18 | 2.4 | **Research and Gather Assumptions** |  | 25d | 2000-01-11 | 2000-02-14 |  | 0d |  |  | 208h |
| 19 | 2.4.1 | Conduct preliminary user interviews |  | 2d | 2000-01-11 | 2000-01-12 |  | 0d |  | Product Management; Program Management; Development | 48h |
| 20 | 2.4.2 | Define usage scenarios |  | 10d | 2000-01-13 | 2000-01-26 | 19 | 0d |  | Product Management [25%]; Development [25%]; Program Management [25%] | 60h |
| 21 | 2.4.3 | Develop preliminary user profile |  | 5d | 2000-01-27 | 2000-02-02 | 20 | 2d | 0d | Product Management [25%]; User Education [25%] | 20h |
| 22 | 2.4.4 | Develop preliminary vision statement |  | 1d | 2000-02-03 | 2000-02-03 | 21 | 2d |  | Product Management [25%] | 2h |
| 23 | 2.4.5 | Establish design goals |  | 8d | 2000-01-27 | 2000-02-07 | 20 | 0d |  | Product Management [25%]; Program Management [25%]; Development [25%] | 48h |
| 24 | 2.4.6 | Develop preliminary solution concept |  | 5d | 2000-02-08 | 2000-02-14 | 23, 22 | 0d |  | Program Management [25%]; Customer [25%]; Development [25%] | 30h |

Notes:
- 10: This task should continue to occur throughout the Envisioning phase. One way to represent this is to do a paste link from the start date of task 12 to the start date of this task, and then do a paste link from the finish date of 34 to the finish date of this task. See the template Help file for more details.

| ID | WBS | Task | Type | Duration | Start | Finish | Predecessors | Total slack | Free slack | Resources | Work |
| --- | --- | --- | --- | --- | --- | --- | --- | --- | --- | --- | --- |
| 25 | 2.5 | **Develop Preliminary Project Scope** |  | 19d | 2000-02-15 | 2000-03-10 | 24, 22 | 0d |  |  | 344h |
| 26 | 2.5.1 | Define critical success factors |  | 2d | 2000-02-15 | 2000-02-16 |  | 0d |  | Product Management | 16h |
| 27 | 2.5.2 | Define success metrics |  | 1d | 2000-02-17 | 2000-02-17 | 26 | 0d |  | Product Management; Testing | 16h |
| 28 | 2.5.3 | Define major deliverables (preliminary) |  | 3d | 2000-02-18 | 2000-02-22 | 27 | 0d |  | Product Management [50%]; Program Management [50%] | 24h |
| 29 | 2.5.4 | Draft vision/scope |  | 3d | 2000-02-23 | 2000-02-25 | 28 | 0d |  | Program Management; Product Management; Development; Testing; Logistics Management | 120h |
| 30 | 2.5.5 | Review vision/scope |  | 2d | 2000-02-28 | 2000-02-29 | 29 | 0d |  | Program Management; Product Management; Development; Testing; Logistics Management; User Education | 96h |
| 31 | 2.5.6 | Update vision/scope |  | 3d | 2000-03-01 | 2000-03-03 | 30 | 0d |  | Product Management | 24h |
| 32 | 2.5.7 | Buffer |  | 4d | 2000-03-06 | 2000-03-09 | 31 | 0d |  |  |  |
| 33 | 2.5.8 | Perform milestone review |  | 1d | 2000-03-10 | 2000-03-10 | 31, 32 | 0d |  | Program Management; Product Management; Development; Testing; Logistics Management; User Education | 48h |
| 34 | 2.6 | Vision approved | milestone | 0d | 2000-03-10 | 2000-03-10 | 33, 28, 17, 10 | 0d |  | Program Management; Product Management; Development; Testing; Logistics Management |  |
| 35 | 3 | **Planning** |  | 59d | 2000-03-13 | 2000-06-01 | 34 | 0d |  |  | 3541.2h |
| 36 | 3.1 | Update risk assessment |  | 1d | 2000-03-13 | 2000-03-13 | 34 | 58d |  | Program Management | 8h |
| 37 | 3.2 | Conduct user interviews |  | 10d | 2000-03-13 | 2000-03-24 | 34 | 0d |  | Product Management [50%]; Development [25%]; Testing [25%]; Logistics Management [25%]; Program Management [50%] | 140h |
| 38 | 3.3 | **Functional Specification Creation** |  | 31d | 2000-03-14 | 2000-04-25 |  | 0d |  |  | 448h |
| 39 | 3.3.1 | Develop functional specification - drop 0 |  | 5d | 2000-03-14 | 2000-03-20 | 37FS-9% | 0d |  | Program Management [80%]; Product Management [30%]; Development [40%]; Testing [50%]; Logistics Management [40%]; User Education [40%] | 112h |
| 40 | 3.3.2 | Develop functional specification - drop 1 |  | 5d | 2000-03-21 | 2000-03-27 | 39 | 22d | 0d | Program Management [80%]; Product Management [30%]; Development [40%]; Testing [50%]; Logistics Management [40%]; User Education [40%] | 112h |
| 41 | 3.3.3 | Develop functional specification - drop 2 |  | 5d | 2000-03-28 | 2000-04-03 | 40 | 22d | 0d | Program Management [80%]; Product Management [30%]; Development [40%]; Testing [50%]; Logistics Management [40%]; User Education [40%] | 112h |
| 42 | 3.3.4 | Develop functional specification - drop n |  | 5d | 2000-04-04 | 2000-04-10 | 41 | 22d | 11d | Program Management [80%]; Product Management [30%]; Development [40%]; Testing [50%]; Logistics Management [40%]; User Education [40%] | 112h |
| 43 | 3.3.5 | Functional specification baseline | milestone | 0d | 2000-04-25 | 2000-04-25 | 42, 48 | 11d | 2d | Program Management |  |
| 44 | 3.4 | **Development Plan** |  | 28.25d | 2000-03-17 | 2000-04-26 |  | 0d |  |  | 598.8h |
| 45 | 3.4.1 | **Create Development Plan** |  | 28d | 2000-03-17 | 2000-04-25 |  | 0d |  |  | 554.8h |
| 46 | 3.4.1.1 | Conduct conceptual design |  | 10d | 2000-03-17 | 2000-03-30 | 39SS+3d | 0d |  | Development [80%]; Program Management [40%]; Testing [25%]; Product Management [20%] | 132h |
| 47 | 3.4.1.2 | Conduct logical design |  | 15d | 2000-03-23 | 2000-04-12 | 46SS+4d | 0d |  | Development [50%]; Program Management [50%]; Testing [25%]; Logistics Management [25%]; User Education [25%] | 210h |
| 48 | 3.4.1.3 | Conduct physical design |  | 19d | 2000-03-30 | 2000-04-25 | 47SS+5d | 0d |  | Development [80%]; Testing [50%]; Program Management [10%] | 212.8h |
| 49 | 3.4.2 | Develop development schedule |  | 5d | 2000-04-19 | 2000-04-26 | 48SS+7.5% | 15.75d |  | Development; Testing [10%] | 44h |

Notes:
- 36: This task should continue to occur throughout the Planning phase. One way to represent this is to do a paste link from the start date of task 37 to the start date of this task, and then do a paste link from the finish date of 78 to the finish date of this task. See the template Help file for more details.

| ID | WBS | Task | Type | Duration | Start | Finish | Predecessors | Total slack | Free slack | Resources | Work |
| --- | --- | --- | --- | --- | --- | --- | --- | --- | --- | --- | --- |
| 50 | 3.5 | **Test Plan** |  | 35d | 2000-03-17 | 2000-05-04 |  | 9d |  | Testing | 624h |
| 51 | 3.5.1 | Develop test plan |  | 30d | 2000-03-17 | 2000-04-27 | 39SS+3d | 9d | 0d | Testing; Program Management [25%] | 300h |
| 52 | 3.5.2 | Develop test schedule |  | 5d | 2000-04-28 | 2000-05-04 | 51, 43 | 9d |  | Testing; Program Management [10%] | 44h |
| 53 | 3.6 | **User Education Plan** |  | 36d | 2000-03-17 | 2000-05-05 |  | 8d |  | User Education | 691.2h |
| 54 | 3.6.1 | Develop user education plan |  | 30d | 2000-03-17 | 2000-04-27 | 39SS+3d | 8d | 0d | User Education; Testing [20%]; Product Management [10%]; Customer [10%] | 336h |
| 55 | 3.6.2 | Develop user education schedule |  | 6d | 2000-04-28 | 2000-05-05 | 54 | 8d |  | User Education; Program Management [10%]; Product Management [20%]; Customer [10%] | 67.2h |
| 56 | 3.7 | **Logistics Plan** |  | 48d | 2000-03-13 | 2000-05-17 |  | 0d |  | Logistics Management | 705.6h |
| 57 | 3.7.1 | **Develop Logistics Plan** |  | 43d | 2000-03-13 | 2000-05-10 |  | 0d |  |  | 321.6h |
| 58 | 3.7.1.1 | Perform infrastructure analysis |  | 15d | 2000-03-13 | 2000-03-31 |  | 1d |  |  |  |
| 59 | 3.7.1.2 | Develop security plan |  | 2d | 2000-03-21 | 2000-03-22 | 39 | 8d |  | Logistics Management; Customer [10%]; Product Management [10%] | 19.2h |
| 60 | 3.7.1.3 | Develop deployment plan |  | 27d | 2000-04-04 | 2000-05-10 | 39FS-3d, 59, 48SS+3d, 58 | 0d |  | Logistics Management; Testing [20%]; User Education [10%]; Customer [10%] | 302.4h |
| 61 | 3.7.1.4 | Order components |  | 15d | 2000-04-18 | 2000-05-08 | 60SS+10d | 0d |  |  |  |
| 62 | 3.7.1.5 | Logistics plan complete | milestone | 0d | 2000-05-08 | 2000-05-08 | 59, 61 | 0d |  |  |  |
| 63 | 3.7.2 | Create logistics schedule |  | 7d | 2000-05-09 | 2000-05-17 | 62 | 0d |  |  |  |
| 64 | 3.8 | **Product Management Plan** |  | 18d | 2000-03-13 | 2000-04-05 |  | 30d |  |  | 48h |
| 65 | 3.8.1 | Develop product management plan |  | 14d | 2000-03-17 | 2000-04-05 | 39SS+3d | 30d |  |  |  |
| 66 | 3.8.2 | Develop product management schedule |  | 5d | 2000-03-13 | 2000-03-17 |  | 43d |  | Product Management; Program Management [20%] | 48h |
| 67 | 3.9 | **Program Management Plan** |  | 41d | 2000-03-17 | 2000-05-12 | 39SS+3d | 3d |  |  | 164h |
| 68 | 3.9.1 | Create program management plan |  | 21d | 2000-03-17 | 2000-04-14 | 39SS+3d | 3d | 0d | Program Management [50%] | 84h |
| 69 | 3.9.2 | Create program management schedule |  | 20d | 2000-04-17 | 2000-05-12 | 68 | 3d |  | Program Management [50%] | 80h |
| 70 | 3.10 | Project plan baseline established | milestone | 0d | 2000-05-17 | 2000-05-17 | 44, 50, 53, 56, 64, 67, 65 | 0d |  | Program Management; Product Management; Development; Testing; Logistics Management |  |
| 71 | 3.11 | **Consolidate Project Plans** |  | 11d | 2000-05-18 | 2000-06-01 | 70 | 0d |  |  | 113.6h |
| 72 | 3.11.1 | Review aggregate plan |  | 4d | 2000-05-18 | 2000-05-23 |  | 0d |  | Program Management [30%]; Product Management [30%]; Development [30%]; Testing [30%]; Logistics Management [30%]; User Education [30%] | 57.6h |
| 73 | 3.11.2 | Create aggregate schedule |  | 2d | 2000-05-24 | 2000-05-25 | 72, 63, 69, 49, 52, 55, 66 | 0d |  |  |  |
| 74 | 3.11.3 | Buffer |  | 4d | 2000-05-26 | 2000-05-31 | 73 | 0d |  |  |  |
| 75 | 3.11.4 | Determine ship date | milestone | 0d | 2000-05-31 | 2000-05-31 | 74 | 0d |  | Program Management; Product Management; Development; Testing; Logistics Management; User Education |  |
| 76 | 3.11.5 | Vision/scope frozen | milestone | 0d | 2000-05-31 | 2000-05-31 | 75 | 0d |  |  |  |
| 77 | 3.11.6 | Perform milestone review |  | 1d | 2000-06-01 | 2000-06-01 | 76 | 0d |  | Program Management; Product Management; Development; Testing; Logistics Management; User Education; Customer | 56h |
| 78 | 3.12 | Project plan approved | milestone | 0d | 2000-06-01 | 2000-06-01 | 71, 77, 36 | 0d |  | Program Management; Product Management; Development; Testing; Logistics Management |  |

| ID | WBS | Task | Type | Duration | Start | Finish | Predecessors | Total slack | Free slack | Resources | Work |
| --- | --- | --- | --- | --- | --- | --- | --- | --- | --- | --- | --- |
| 79 | 4 | **Developing** |  | 81d | 2000-06-01 | 2000-09-22 |  | 0d |  | Development | 3141.04h |
| 80 | 4.1 | Update risk assessment |  | 1d | 2000-06-02 | 2000-06-02 | 78 | 79d |  | Program Management [3%]; Product Management [3%]; Development [3%]; Testing [3%]; Logistics Management [3%]; User Education [3%] | 1.44h |
| 81 | 4.2 | Equipment for development/proof of concept arrives | milestone | 0d | 2000-06-01 | 2000-06-01 | 78 | 0d |  | Logistics Management |  |
| 82 | 4.3 | Set up development environment/lab |  | 5d | 2000-06-02 | 2000-06-08 | 81 | 0d |  | Logistics Management | 40h |
| 83 | 4.4 | **Internal Release #1** |  | 24d | 2000-06-02 | 2000-07-05 |  | 0d |  | Development | 691.6h |
| 84 | 4.4.1 | Develop target components |  | 9d | 2000-06-02 | 2000-06-14 | 78 | 15d |  | Development; Logistics Management | 144h |
| 85 | 4.4.2 | Test individual components |  | 5d | 2000-06-09 | 2000-06-15 | 82 | 0d |  | Testing; Development [25%] | 50h |
| 86 | 4.4.3 | Test integrated application |  | 6d | 2000-06-13 | 2000-06-20 | 85SS+2d | 0d |  | Testing; Development [25%] | 60h |
| 87 | 4.4.4 | Develop performance enhancement materials |  | 4d | 2000-06-02 | 2000-06-07 | 78 | 8d | 0d | User Education | 32h |
| 88 | 4.4.5 | Test and review materials |  | 3d | 2000-06-08 | 2000-06-12 | 87 | 8d | 0d | Testing | 24h |
| 89 | 4.4.6 | Develop distribution procedures |  | 9d | 2000-06-13 | 2000-06-23 | 88 | 8d |  | Logistics Management; Testing [30%] | 93.6h |
| 90 | 4.4.7 | Create distribution product |  | 2d | 2000-06-21 | 2000-06-22 | 85, 86 | 0d |  | Program Management; Development; Testing; Logistics Management; User Education | 80h |
| 91 | 4.4.8 | Distribute to appropriate parties |  | 1d | 2000-06-23 | 2000-06-23 | 90 | 0d |  | Program Management; Logistics Management | 16h |
| 92 | 4.4.9 | Buffer |  | 8d | 2000-06-26 | 2000-07-05 | 91 | 0d |  |  |  |
| 93 | 4.5 | Internal release #1 complete | milestone | 0d | 2000-07-05 | 2000-07-05 | 83, 92 | 0d |  | Program Management; Product Management; Development; Testing; Logistics Management |  |
| 94 | 4.6 | Review results from internal release |  | 2d | 2000-07-06 | 2000-07-07 | 93 | 0d |  |  |  |
| 95 | 4.7 | Perform post-release review |  | 1d | 2000-07-10 | 2000-07-10 | 94 | 0d |  |  |  |
| 96 | 4.8 | **Internal Release #n** |  | 24d | 2000-07-06 | 2000-08-08 |  | 0d |  | Development | 696h |
| 97 | 4.8.1 | Develop target components |  | 10d | 2000-07-06 | 2000-07-19 | 93 | 3d |  | Development; Testing [50%]; Logistics Management | 200h |
| 98 | 4.8.2 | Test individual components |  | 4d | 2000-07-06 | 2000-07-11 | 93 | 9d |  | Testing | 32h |
| 99 | 4.8.3 | Test integrated application |  | 5d | 2000-07-06 | 2000-07-12 | 93 | 18d |  | Testing | 40h |
| 100 | 4.8.4 | Develop performance enhancement materials |  | 4d | 2000-07-11 | 2000-07-14 | 95 | 0d |  | User Education | 32h |
| 101 | 4.8.5 | Test and review materials |  | 3d | 2000-07-17 | 2000-07-19 | 100 | 0d |  | Testing | 24h |
| 102 | 4.8.6 | Develop distribution procedures |  | 3d | 2000-07-20 | 2000-07-24 | 101 | 0d |  | Logistics Management | 24h |
| 103 | 4.8.7 | Create distribution product |  | 4d | 2000-07-25 | 2000-07-28 | 98, 97, 102 | 0d |  | Development; Testing; Logistics Management; User Education | 128h |
| 104 | 4.8.8 | Buffer |  | 6d | 2000-07-31 | 2000-08-07 | 103 | 0d |  |  |  |
| 105 | 4.8.9 | Distribute to appropriate parties |  | 1d | 2000-08-08 | 2000-08-08 | 99, 104 | 0d |  | Logistics Management; Program Management; Product Management | 24h |
| 106 | 4.9 | Internal release #n complete |  | 1d | 2000-08-09 | 2000-08-09 | 96, 105 | 0d |  | Program Management; Product Management; Development; Testing; Logistics Management | 40h |
| 107 | 4.10 | Review results from internal release |  | 2d | 2000-08-10 | 2000-08-11 | 106 | 0d |  | Program Management; Product Management; Development; Testing; Logistics Management; User Education | 96h |
| 108 | 4.11 | Functional specification freeze |  | 1d | 2000-08-14 | 2000-08-14 | 107 | 0d |  |  |  |
| 109 | 4.12 | Final feature development |  | 10d | 2000-08-15 | 2000-08-28 | 108 | 0d |  | Development; Testing [50%] | 120h |
| 110 | 4.13 | Final logistics development |  | 9d | 2000-08-15 | 2000-08-25 | 108 | 1d |  | Logistics Management; Testing [50%] | 108h |
| 111 | 4.14 | Final performance support development |  | 5d | 2000-08-15 | 2000-08-21 | 108 | 5d |  | User Education; Testing [50%] | 60h |
| 112 | 4.15 | Feature complete | milestone | 0d | 2000-08-28 | 2000-08-28 | 109, 111, 110 | 0d |  |  |  |

Notes:
- 80: This task should continue to occur throughout the Developing phase. One way to represent this is to do a paste link from the start date of task 81 to the start date of this task, and then do a paste link from the finish date of 122 to the finish date of this task. See the template Help file for more details.

| ID | WBS | Task | Type | Duration | Start | Finish | Predecessors | Total slack | Resources | Work |
| --- | --- | --- | --- | --- | --- | --- | --- | --- | --- | --- |
| 113 | 4.16 | **Update Plans and Schedules** |  | 13d | 2000-08-29 | 2000-09-14 |  | 0d | Program Management | 360h |
| 114 | 4.16.1 | Update development plan |  | 4d | 2000-08-29 | 2000-09-01 | 112 | 0d | Development | 32h |
| 115 | 4.16.2 | Update testing plan |  | 3d | 2000-08-29 | 2000-08-31 | 114SS | 10d | Testing | 24h |
| 116 | 4.16.3 | Update logistics plan |  | 13d | 2000-08-29 | 2000-09-14 | 114SS | 0d | Logistics Management | 104h |
| 117 | 4.16.4 | Update program management plan |  | 3d | 2000-08-29 | 2000-08-31 | 114SS | 10d | Program Management | 24h |
| 118 | 4.16.5 | Update product management plan |  | 3d | 2000-08-29 | 2000-08-31 | 114SS | 10d | Product Management | 24h |
| 119 | 4.16.6 | Update user education plan |  | 6d | 2000-08-29 | 2000-09-05 | 114SS | 7d | User Education | 48h |
| 120 | 4.17 | Buffer |  | 3d | 2000-09-15 | 2000-09-19 | 114, 115, 116, 119, 117, 118 | 0d | Program Management; Product Management; Development; Testing; Logistics Management; User Education | 144h |
| 121 | 4.18 | Perform milestone review |  | 2d | 2000-09-20 | 2000-09-21 | 120 | 0d | Program Management; Product Management; Development; Testing; Logistics Management; User Education | 96h |
| 122 | 4.19 | Scope complete |  | 1d | 2000-09-22 | 2000-09-22 | 113, 121, 80 | 0d | Program Management; Product Management; Development; Testing; Logistics Management | 40h |
| 123 | 5 | **Stabilizing** |  | 73d | 2000-09-25 | 2001-01-03 |  | 0d | Logistics Management | 1684h |
| 124 | 5.1 | Update risk assessment |  | 1d | 2000-09-25 | 2000-09-25 | 122, 103 | 71d | Program Management [10%]; Product Management [10%]; Development [10%]; Testing [10%]; Logistics Management [10%]; User Education [10%]; Support Organization [10%]; Customer [10%] | 6.4h |
| 125 | 5.2 | **Beta Release 1** |  | 32d | 2000-09-25 | 2000-11-07 |  | 0d |  | 784h |
| 126 | 5.2.1 | Develop beta plan |  | 3d | 2000-09-25 | 2000-09-27 | 103, 122 | 0d | Program Management; Logistics Management | 48h |
| 127 | 5.2.2 | Solicit and select users |  | 2d | 2000-09-28 | 2000-09-29 | 126 | 0d | Product Management; Program Management | 32h |
| 128 | 5.2.3 | Prepare beta package |  | 8d | 2000-09-28 | 2000-10-09 | 120, 127SS | 0d | Program Management; Development; Logistics Management; Testing | 256h |
| 129 | 5.2.4 | Begin beta | milestone | 0d | 2000-10-09 | 2000-10-09 | 128 | 0d |  |  |
| 130 | 5.2.5 | Provide beta support |  | 8d | 2000-10-10 | 2000-10-19 | 129 | 0d | Development; Logistics Management | 128h |
| 131 | 5.2.6 | Gather user feedback |  | 7d | 2000-10-20 | 2000-10-30 | 130 | 0d |  |  |
| 132 | 5.2.7 | Close beta support | milestone | 0d | 2000-10-30 | 2000-10-30 | 131 | 0d |  |  |
| 133 | 5.2.8 | Fix bugs |  | 10d | 2000-10-25 | 2000-11-07 | 132FS-4d | 0d | Development; Program Management; Logistics Management; User Education | 320h |
| 134 | 5.2.9 | End beta | milestone | 0d | 2000-11-07 | 2000-11-07 | 130, 133 | 0d |  |  |
| 135 | 5.3 | Beta release n |  | 1d | 2000-11-08 | 2000-11-08 | 134 | 0d |  |  |
| 136 | 5.4 | Fix bugs |  | 10d | 2000-11-09 | 2000-11-22 | 135 | 0d | Development; Testing; Program Management [25%] | 180h |
| 137 | 5.5 | Bug convergence |  | 1d | 2000-11-23 | 2000-11-23 | 136 | 0d |  |  |
| 138 | 5.6 | Fix high priority bugs |  | 10d | 2000-11-24 | 2000-12-07 | 137 | 0d |  |  |
| 139 | 5.7 | Zero bug release | milestone | 0d | 2000-12-07 | 2000-12-07 | 138 | 0d | Program Management |  |
| 140 | 5.8 | Perform final bug triage |  | 5d | 2000-12-08 | 2000-12-14 | 139 | 0d |  |  |

Notes:
- 124: This task should continue to occur throughout the Stabilizing phase. One way to represent this is to do a paste link from the start date of task 126 to the start date of this task, and then do a paste link from the finish date of 147 to the finish date of this task. See the template Help file for more details.

| ID | WBS | Task | Type | Duration | Start | Finish | Predecessors | Total slack | Resources | Work |
| --- | --- | --- | --- | --- | --- | --- | --- | --- | --- | --- |
| 141 | 5.9 | **Release Candidate 1** |  | 7d | 2000-12-15 | 2000-12-25 | 140 | 0d |  | 129.6h |
| 142 | 5.9.1 | Development team evaluation |  | 2d | 2000-12-15 | 2000-12-18 |  | 0d | Development; Logistics Management [80%]; Program Management [50%]; Product Management [30%]; User Education [50%]; Testing [75%] | 61.6h |
| 143 | 5.9.2 | Customer/user evaluation |  | 2d | 2000-12-19 | 2000-12-20 | 142 | 0d | Product Management; User Education | 32h |
| 144 | 5.9.3 | Support evaluation |  | 3d | 2000-12-21 | 2000-12-25 | 143 | 0d | Support Organization; Logistics Management [25%]; Program Management [25%] | 36h |
| 145 | 5.10 | Release candidate n |  | 6d | 2000-12-26 | 2001-01-02 | 144 | 0d |  |  |
| 146 | 5.11 | Golden release | milestone | 0d | 2001-01-02 | 2001-01-02 | 145 | 0d |  |  |
| 147 | 5.12 | Release |  | 1d | 2001-01-03 | 2001-01-03 | 146, 124 | 0d |  |  |
| 148 | 6 | Post project review |  | 2d | 2001-02-15 | 2001-02-16 | 147FS+30d | 0d |  |  |
